# Desenvolvimento Cronograma - grafico de dependencia final

Schedule from MS Project, 2011-04-11 to 2011-04-29.
iDEZ

## Calendars

- Padrão: Mon-Fri 09:00-12:00, 13:00-18:00; Sat-Sun off.

## Resources

| Resource |
| --- |
| ADEV |
| JEDI |
| DROIDMASTER |
| Thiago Venancio |
| Arthur |
| Paulo |
| Rafael |
| Edkarla |
| Bruno e Daniel |
| Thiago e Gustavo |
| Wlysses |
| Ivan |
| Eduardo |
| Orlando |
| Davi |

## Schedule

| ID | WBS | Task | Duration | Start | Finish | Predecessors | Total slack | Free slack | Resources | Work |
| --- | --- | --- | --- | --- | --- | --- | --- | --- | --- | --- |
| 1 | 1 | **Projeto Fitness Mobile** | 15d | 2011-04-11 09:00 | 2011-04-29 18:00 |  | 0d |  |  | 524h |
| 2 | 1.1 | **RNF_03: Definição da UI para Aplicação** | 2.25d | 2011-04-11 09:00 | 2011-04-13 11:00 |  | 0d |  |  |  |
| 3 | 1.1.1 | Realizar análise do requisito | 3h | 2011-04-11 09:00 | 2011-04-11 12:00 |  | 0d |  |  |  |
| 4 | 1.1.2 | Criar Diagrama de Classes, Caso de Uso e Diagrama de Sequencia | 4h | 2011-04-11 13:00 | 2011-04-11 17:00 | 3 | 0d |  |  |  |
| 5 | 1.1.3 | Codificar | 7h | 2011-04-11 17:00 | 2011-04-12 16:00 | 4 | 0d |  |  |  |
| 6 | 1.1.4 | Revisar | 2h | 2011-04-12 16:00 | 2011-04-12 18:00 | 5 | 0d |  |  |  |
| 7 | 1.1.5 | Testar | 2h | 2011-04-13 09:00 | 2011-04-13 11:00 | 6 | 0d |  |  |  |
| 8 | 1.2 | **RNF_06: Configuração do ambiente do projeto** | 1d | 2011-04-11 09:00 | 2011-04-11 18:00 |  | 1.25d |  |  |  |
| 9 | 1.2.1 | Analisar a necessidade do software | 3h | 2011-04-11 09:00 | 2011-04-11 12:00 |  | 1.25d | 0d |  |  |
| 10 | 1.2.2 | Instalar e configurar o ambiente | 5h | 2011-04-11 13:00 | 2011-04-11 18:00 | 9 | 1.25d |  |  |  |
| 11 | 1.3 | **RF_11: Escolha do modo de visualização** | 0.75d | 2011-04-13 11:00 | 2011-04-13 18:00 | 2 | 11d |  | JEDI | 12h |
| 12 | 1.3.1 | Realizar análise do requisito | 1h | 2011-04-13 11:00 | 2011-04-13 12:00 |  | 11d | 0d | Ivan | 1h |
| 13 | 1.3.2 | Criar Diagrama de Classes, Caso de Uso e Diagrama Objeto Relacional | 30min | 2011-04-13 13:00 | 2011-04-13 13:30 | 12 | 11d | 0d | Ivan | 0.5h |
| 14 | 1.3.3 | Definir a interface de interação com o usuário | 1h | 2011-04-13 13:30 | 2011-04-13 14:30 | 13 | 11d | 0d | Eduardo | 1h |
| 15 | 1.3.4 | Codificar | 2h | 2011-04-13 14:30 | 2011-04-13 16:30 | 14 | 11d | 0d | Eduardo | 2h |
| 16 | 1.3.5 | Revisar | 30min | 2011-04-13 16:30 | 2011-04-13 17:00 | 15 | 11d | 0d | Orlando | 0.5h |
| 17 | 1.3.6 | Testar | 1h | 2011-04-13 17:00 | 2011-04-13 18:00 | 16 | 11d |  | Davi | 1h |
| 18 | 1.4 | **RF_01: Manter dados do Usuário** | 1d | 2011-04-13 11:00 | 2011-04-14 11:00 | 2, 8 | 3.25d | 1.5d | JEDI | 16h |
| 19 | 1.4.1 | Realizar análise do requisito | 1h | 2011-04-13 11:00 | 2011-04-13 12:00 |  | 3.25d | 0d | Orlando | 1h |
| 20 | 1.4.2 | Criar Diagrama de Classes, Caso de Uso e Diagrama Objeto Relacional | 1h | 2011-04-13 13:00 | 2011-04-13 14:00 | 19 | 3.25d | 0d | Orlando | 1h |
| 21 | 1.4.3 | Criação da camada de acesso à base de dados | 2h | 2011-04-13 14:00 | 2011-04-13 16:00 | 20 | 3.25d | 0d | Ivan | 2h |
| 22 | 1.4.4 | Codificação do CRUD | 2h | 2011-04-13 16:00 | 2011-04-13 18:00 | 21 | 3.25d | 0d | Eduardo | 2h |
| 23 | 1.4.5 | Revisar | 1h | 2011-04-14 09:00 | 2011-04-14 10:00 | 22 | 3.25d | 0d | Davi | 1h |
| 24 | 1.4.6 | Testar | 1h | 2011-04-14 10:00 | 2011-04-14 11:00 | 23 | 3.25d |  | Davi | 1h |

| ID | WBS | Task | Duration | Start | Finish | Predecessors | Total slack | Free slack | Resources | Work |
| --- | --- | --- | --- | --- | --- | --- | --- | --- | --- | --- |
| 25 | 1.5 | **RF_02: Manter exercícios** | 1d | 2011-04-13 11:00 | 2011-04-14 11:00 | 2, 8 | 0d |  | ADEV | 16h |
| 26 | 1.5.1 | Realizar análise do requisito | 1h | 2011-04-13 11:00 | 2011-04-13 12:00 |  | 0d |  | Thiago Venancio | 1h |
| 27 | 1.5.2 | Criar Diagrama de Classes, Caso de Uso e Diagrama Objeto Relacional | 1h | 2011-04-13 13:00 | 2011-04-13 14:00 | 26 | 0d |  | Thiago Venancio | 1h |
| 28 | 1.5.3 | Levantar estrutura da base de dados | 2h | 2011-04-13 14:00 | 2011-04-13 16:00 | 27 | 0d |  | Arthur | 2h |
| 29 | 1.5.4 | Codificar | 2h | 2011-04-13 16:00 | 2011-04-13 18:00 | 28 | 0d |  | Paulo | 2h |
| 30 | 1.5.5 | Revisar | 1h | 2011-04-14 09:00 | 2011-04-14 10:00 | 29 | 0d |  | Arthur | 1h |
| 31 | 1.5.6 | Testar | 1h | 2011-04-14 10:00 | 2011-04-14 11:00 | 30 | 0d |  | Edkarla | 1h |
| 32 | 1.6 | **RF_03: Manter programa de exercícios** | 1d | 2011-04-14 11:00 | 2011-04-15 11:00 | 31 | 1.75d | 0d | ADEV | 16h |
| 33 | 1.6.1 | Realizar análise do requisito | 1h | 2011-04-14 11:00 | 2011-04-14 12:00 |  | 1.75d | 0d | Edkarla | 1h |
| 34 | 1.6.2 | Criar Diagrama de Classes, Caso de Uso e Diagrama Objeto Relacional | 1h | 2011-04-14 13:00 | 2011-04-14 14:00 | 33 | 1.75d | 0d | Edkarla | 1h |
| 35 | 1.6.3 | Levantar estrutura da base de dados | 2h | 2011-04-14 14:00 | 2011-04-14 16:00 | 34 | 1.75d | 0d | Paulo | 2h |
| 36 | 1.6.4 | Codificar | 2h | 2011-04-14 16:00 | 2011-04-14 18:00 | 35 | 1.75d | 0d | Arthur | 2h |
| 37 | 1.6.5 | Revisar | 1h | 2011-04-15 09:00 | 2011-04-15 10:00 | 36 | 1.75d | 0d | Thiago Venancio | 1h |
| 38 | 1.6.6 | Testar | 1h | 2011-04-15 10:00 | 2011-04-15 11:00 | 37 | 1.75d |  | Edkarla | 1h |
| 39 | 1.7 | **RF_07: Registro de rastreamento do usuário via GPS** | 7.5d | 2011-04-14 11:00 | 2011-04-25 16:00 | 25 | 0d |  | DROIDMASTER | 120h |
| 40 | 1.7.1 | Realizar análise do requisito | 6h | 2011-04-14 11:00 | 2011-04-14 18:00 |  | 0d |  | Bruno e Daniel | 6h |
| 41 | 1.7.2 | Criar Diagrama de Classes, Caso de Uso e Diagrama Objeto Relacional | 4h | 2011-04-15 09:00 | 2011-04-15 14:00 | 40 | 0d |  | Bruno e Daniel | 4h |
| 42 | 1.7.3 | Criação da funcionalidade de iniciar registro | 9h | 2011-04-15 14:00 | 2011-04-18 15:00 | 41 | 0d |  | Thiago e Gustavo | 9h |
| 43 | 1.7.4 | Criação da funcionalidade de finalizar registro | 9h | 2011-04-18 15:00 | 2011-04-19 16:00 | 42 | 0d |  | Thiago e Gustavo | 9h |
| 44 | 1.7.5 | Acesso API para leitura dos dados | 8h | 2011-04-19 16:00 | 2011-04-20 16:00 | 43 | 0d |  | Thiago e Gustavo | 8h |
| 45 | 1.7.6 | Guardar na base de dados | 9h | 2011-04-20 16:00 | 2011-04-21 17:00 | 44 | 0d |  | Thiago e Gustavo | 9h |
| 46 | 1.7.7 | Atualização das informações | 10h | 2011-04-21 17:00 | 2011-04-25 10:00 | 45 | 0d |  | Thiago e Gustavo | 10h |
| 47 | 1.7.8 | Revisar | 2h | 2011-04-25 10:00 | 2011-04-25 12:00 | 46 | 0d |  | Wlysses | 2h |
| 48 | 1.7.9 | Testar | 3h | 2011-04-25 13:00 | 2011-04-25 16:00 | 47 | 0d |  | Wlysses | 3h |

| ID | WBS | Task | Duration | Start | Finish | Predecessors | Total slack | Free slack | Resources | Work |
| --- | --- | --- | --- | --- | --- | --- | --- | --- | --- | --- |
| 49 | 1.8 | **RF_04: Agenda de exercícios executados(Baixa de exercicios)** | 0.5d | 2011-04-15 11:00 | 2011-04-15 16:00 | 32 | 1.75d | 0d | ADEV | 8h |
| 50 | 1.8.1 | Realizar análise do requisito | 30min | 2011-04-15 11:00 | 2011-04-15 11:30 |  | 1.75d | 0d | Thiago Venancio | 0.5h |
| 51 | 1.8.2 | Criar Diagrama de Classes, Caso de Uso e Diagrama Objeto Relacional | 30min | 2011-04-15 11:30 | 2011-04-15 12:00 | 50 | 1.75d | 0d | Thiago Venancio | 0.5h |
| 52 | 1.8.3 | Modelar um Banco de Dados para manter o cadastro dos exercicios do cliente (CRUD) | 1h | 2011-04-15 13:00 | 2011-04-15 14:00 | 51 | 1.75d | 0d | Paulo | 1h |
| 53 | 1.8.4 | Codificação | 1h | 2011-04-15 14:00 | 2011-04-15 15:00 | 52 | 1.75d | 0d | Arthur | 1h |
| 54 | 1.8.5 | Revisão | 30min | 2011-04-15 15:00 | 2011-04-15 15:30 | 53 | 1.75d | 0d | Paulo | 0.5h |
| 55 | 1.8.6 | Fazer os testes | 30min | 2011-04-15 15:30 | 2011-04-15 16:00 | 54 | 1.75d | 0d | Edkarla | 0.5h |
| 56 | 1.9 | **RF_06: Mostrar o desenvolvimento do usuário por periodo** | 7.5d | 2011-04-15 16:00 | 2011-04-27 11:00 | 18, 55 | 1.75d |  | JEDI | 120h |
| 57 | 1.9.1 | Analisar o requisito | 10h | 2011-04-15 16:00 | 2011-04-18 18:00 |  | 1.75d | 0d | Eduardo | 10h |
| 58 | 1.9.2 | Criar Diagrama de Classes, Caso de Uso e Diagrama Objeto Relacional | 6h | 2011-04-19 09:00 | 2011-04-19 16:00 | 57 | 1.75d | 0d | Eduardo | 6h |
| 59 | 1.9.3 | Definir a interface de interação com o usuário | 14h | 2011-04-19 16:00 | 2011-04-21 14:00 | 58 | 1.75d | 0d | Orlando | 14h |
| 60 | 1.9.4 | Codificar | 20h | 2011-04-21 14:00 | 2011-04-25 18:00 | 59 | 1.75d | 0d | Davi | 20h |
| 61 | 1.9.5 | Revisar | 4h | 2011-04-26 09:00 | 2011-04-26 14:00 | 60 | 1.75d | 0d | Ivan | 4h |
| 62 | 1.9.6 | Testar | 6h | 2011-04-26 14:00 | 2011-04-27 11:00 | 61 | 1.75d |  | Ivan | 6h |
| 63 | 1.10 | **RF_05: Consultar estatísticas comparativas do programa agendado e das atividades executadas** | 7.5d | 2011-04-15 16:00 | 2011-04-27 11:00 | 49 | 1.75d |  | ADEV | 120h |
| 64 | 1.10.1 | Realizar análise do requisito | 15h | 2011-04-15 16:00 | 2011-04-19 15:00 |  | 1.75d | 0d | Edkarla | 15h |
| 65 | 1.10.2 | Criar Diagrama de Classes, Caso de Uso e Diagrama Objeto Relacional | 9h | 2011-04-19 15:00 | 2011-04-20 16:00 | 64 | 1.75d | 0d | Edkarla | 9h |
| 66 | 1.10.3 | Codificar | 22h | 2011-04-20 16:00 | 2011-04-25 14:00 | 65 | 1.75d | 0d | Paulo | 22h |
| 67 | 1.10.4 | Revisar | 5h | 2011-04-25 14:00 | 2011-04-26 10:00 | 66 | 1.75d | 0d | Arthur | 5h |
| 68 | 1.10.5 | Testar o requisito | 9h | 2011-04-26 10:00 | 2011-04-27 11:00 | 67 | 1.75d |  | Thiago Venancio | 9h |
| 69 | 1.11 | **RF_10: Controle das atividades durante o exercício** | 0.75d | 2011-04-15 16:00 | 2011-04-18 14:00 | 49 | 8.5d |  | JEDI | 12h |
| 70 | 1.11.1 | Realizar análise do requisito | 1h | 2011-04-15 16:00 | 2011-04-15 17:00 |  | 8.5d | 0d | Davi | 1h |
| 71 | 1.11.2 | Criar Diagrama de Classes, Caso de Uso e Diagrama Objeto Relacional | 30min | 2011-04-15 17:00 | 2011-04-15 17:30 | 70 | 8.5d | 0d | Davi | 0.5h |
| 72 | 1.11.3 | Definir a interface de interação com o usuário | 30min | 2011-04-15 17:30 | 2011-04-15 18:00 | 71 | 8.5d | 0d | Ivan | 0.5h |
| 73 | 1.11.4 | Codificar | 2h | 2011-04-18 09:00 | 2011-04-18 11:00 | 72 | 8.5d | 0d | Ivan | 2h |
| 74 | 1.11.5 | Revisar | 30min | 2011-04-18 11:00 | 2011-04-18 11:30 | 73 | 8.5d | 0d | Eduardo | 0.5h |
| 75 | 1.11.6 | Testar | 1.5h | 2011-04-18 11:30 | 2011-04-18 14:00 | 74 | 8.5d |  | Orlando | 1.5h |

| ID | WBS | Task | Duration | Start | Finish | Predecessors | Total slack | Resources | Work |
| --- | --- | --- | --- | --- | --- | --- | --- | --- | --- |
| 76 | 1.12 | **RF_08: Fornecer Mapa do percurso percorrido** | 2.25d | 2011-04-25 16:00 | 2011-04-27 18:00 | 39 | 0d | DROIDMASTER | 36h |
| 77 | 1.12.1 | Realizar análise do requisito | 3h | 2011-04-25 16:00 | 2011-04-26 10:00 |  | 0d | Bruno e Daniel | 3h |
| 78 | 1.12.2 | Definir a interface de interação com o usuário, como o mapa será mostrado | 2h | 2011-04-26 10:00 | 2011-04-26 12:00 | 77 | 0d | Bruno e Daniel | 2h |
| 79 | 1.12.3 | Criar Diagrama de Classes, Caso de Uso e Diagrama Objeto Relacional | 1h | 2011-04-26 13:00 | 2011-04-26 14:00 | 78 | 0d | Bruno e Daniel | 1h |
| 80 | 1.12.4 | Codificar | 7h | 2011-04-26 14:00 | 2011-04-27 12:00 | 79 | 0d | Thiago e Gustavo | 7h |
| 81 | 1.12.5 | Revisar | 1h | 2011-04-27 13:00 | 2011-04-27 14:00 | 80 | 0d | Wlysses | 1h |
| 82 | 1.12.6 | Testar | 4h | 2011-04-27 14:00 | 2011-04-27 18:00 | 81 | 0d | Wlysses | 4h |
| 83 | 1.13 | **RF_09: Disponibilizar para o usuário o desempenho no percurso rastreado** | 1d | 2011-04-28 09:00 | 2011-04-28 18:00 | 82 | 0d | DROIDMASTER | 16h |
| 84 | 1.13.1 | Analisar o requisito | 1h | 2011-04-28 09:00 | 2011-04-28 10:00 |  | 0d | Bruno e Daniel | 1h |
| 85 | 1.13.2 | Criar Diagrama de Classes, Caso de Uso e Diagrama Objeto Relacional | 1h | 2011-04-28 10:00 | 2011-04-28 11:00 | 84 | 0d | Bruno e Daniel | 1h |
| 86 | 1.13.3 | Codificar | 3h | 2011-04-28 11:00 | 2011-04-28 15:00 | 85 | 0d | Thiago e Gustavo | 3h |
| 87 | 1.13.4 | Revisar | 30min | 2011-04-28 15:00 | 2011-04-28 15:30 | 86 | 0d | Wlysses | 0.5h |
| 88 | 1.13.5 | Testar o requisito | 2.5h | 2011-04-28 15:30 | 2011-04-28 18:00 | 87 | 0d | Wlysses | 2.5h |
| 89 | 1.14 | **Final do Projeto** | 1d | 2011-04-29 09:00 | 2011-04-29 18:00 | 2, 8, 11, 18, 25, 32, 39, 49, 56, 63, 69, 76, 88 | 0d |  | 32h |
| 90 | 1.14.1 | **RF_12: Exportar Informações** | 1d | 2011-04-29 09:00 | 2011-04-29 18:00 |  | 0d | JEDI | 16h |
| 91 | 1.14.1.1 | Realizar análise do requisito | 1.5h | 2011-04-29 09:00 | 2011-04-29 10:30 |  | 0d | Orlando | 1.5h |
| 92 | 1.14.1.2 | Criar Diagrama de Classes, Caso de Uso e Diagrama de Sequencia | 1h | 2011-04-29 10:30 | 2011-04-29 11:30 | 91 | 0d | Orlando | 1h |
| 93 | 1.14.1.3 | Codificar | 3h | 2011-04-29 11:30 | 2011-04-29 15:30 | 92 | 0d | Ivan | 3h |
| 94 | 1.14.1.4 | Revisar | 30min | 2011-04-29 15:30 | 2011-04-29 16:00 | 93 | 0d | Eduardo | 0.5h |
| 95 | 1.14.1.5 | Testar | 2h | 2011-04-29 16:00 | 2011-04-29 18:00 | 94 | 0d | Davi | 2h |
| 96 | 1.14.2 | **RF_13: Configuração da Aplicação** | 1d | 2011-04-29 09:00 | 2011-04-29 18:00 |  | 0d | ADEV | 16h |
| 97 | 1.14.2.1 | Realizar análise do requisito | 1.5h | 2011-04-29 09:00 | 2011-04-29 10:30 |  | 0d | Edkarla | 1.5h |
| 98 | 1.14.2.2 | Criar Diagrama de Classes, Caso de Uso e Diagrama de Sequencia | 1h | 2011-04-29 10:30 | 2011-04-29 11:30 | 97 | 0d | Arthur | 1h |
| 99 | 1.14.2.3 | Codificar | 3h | 2011-04-29 11:30 | 2011-04-29 15:30 | 98 | 0d | Paulo | 3h |
| 100 | 1.14.2.4 | Revisar | 30min | 2011-04-29 15:30 | 2011-04-29 16:00 | 99 | 0d | Thiago Venancio | 0.5h |
| 101 | 1.14.2.5 | Testar | 2h | 2011-04-29 16:00 | 2011-04-29 18:00 | 100 | 0d | Paulo | 2h |
